# MIDAS_Project

Schedule from MS Project, 2020-01-16 to 2020-08-01, A marks actual dates.

## Calendars

- Standard: Mon-Fri 08:00-12:00, 13:00-17:00; Sat-Sun off.

## Resources

| Resource |
| --- |
| Gabriel |
| Edward |
| Manuel |
| R |

## Schedule

| ID | WBS | Task | Type | Duration | Start | Finish | Predecessors | Complete | Baseline start | Baseline finish | Baseline duration | Resources | Work | Actual work |
| --- | --- | --- | --- | --- | --- | --- | --- | --- | --- | --- | --- | --- | --- | --- |
| 1 | 1 | **Deliverable 1** |  | 32d | 2020-01-16 A | 2020-02-28 A |  | 100% |  |  |  |  | 272h | 272h |
| 2 | 1.1 | Project Definition (Kickoff Meeting) | milestone, manual | 1d | 2020-01-16 A | 2020-01-16 A |  | 100% | 2020-01-16 | 2020-01-16 | 1d |  |  |  |
| 3 | 1.2 | Project Planning | manual | 6d | 2020-01-17 A | 2020-01-24 A | 2 | 100% | 2020-01-17 | 2020-01-23 | 5d | Gabriel | 48h | 48h |
| 4 | 1.3 | Feasibility Study | manual | 10d | 2020-01-23 A | 2020-02-05 A |  | 100% | 2020-01-23 | 2020-02-04 | 9d | Edward | 80h | 80h |
| 5 | 1.4 | Requirements Elicitation | manual | 9d | 2020-02-05 A | 2020-02-17 A | 4 | 100% | 2020-02-05 | 2020-02-13 | 7d | Manuel | 72h | 72h |
| 6 | 1.5 | Requirements Analysis | manual | 9d | 2020-02-17 A | 2020-02-27 A | 5 | 100% | 2020-02-17 | 2020-02-27 | 9d | Manuel | 72h | 72h |
| 7 | 1.6 | Deliverable 1 Finish | milestone, manual | 1d | 2020-02-28 A | 2020-02-28 A | 6 | 100% | 2020-02-28 | 2020-02-28 | 1d |  |  |  |
| 8 | 2 | **Deliverable 2** |  | 37d | 2020-03-02 A | 2020-04-21 A |  | 100% |  |  |  |  | 288h | 288h |
| 9 | 2.1 | Effort Estimation | manual | 5d | 2020-03-02 A | 2020-03-06 A | 7 | 100% | 2020-03-02 | 2020-03-04 | 3d | Edward | 40h | 40h |
| 10 | 2.2 | Risk Management Plan | manual | 6d | 2020-03-13 A | 2020-03-20 A |  | 100% | 2020-03-13 | 2020-03-18 | 4d | Edward | 48h | 48h |
| 11 | 2.3 | Monitoring | manual | 8d | 2020-03-19 A | 2020-03-30 A |  | 100% | 2020-03-19 | 2020-03-27 | 7d | Gabriel | 64h | 64h |
| 12 | 2.4 | System Design | manual | 7d | 2020-03-30 A | 2020-04-07 A | 11 | 100% | 2020-03-30 | 2020-04-06 | 6d | Manuel | 56h | 56h |
| 13 | 2.5 | Detailed Design | manual | 10d | 2020-04-07 A | 2020-04-20 A | 12 | 100% | 2020-04-07 | 2020-04-15 | 7d | Manuel | 80h | 80h |
| 14 | 2.6 | Deliverable 2 Finish | milestone, manual | 1d | 2020-04-21 A | 2020-04-21 A | 13 | 100% | 2020-04-16 | 2020-04-16 | 1d |  |  |  |
| 15 | 3 | **Implementation** |  | 70d? | 2020-04-28 | 2020-08-01 |  |  |  |  |  |  | 1472h |  |
| 16 | 3.1 | Use case 1 | manual | 14d | 2020-04-28 | 2020-05-15 |  |  |  |  |  | Gabriel | 112h |  |
| 17 | 3.2 | Use case 2 | manual | 14d | 2020-04-28 | 2020-05-15 |  |  |  |  |  | Edward | 112h |  |
| 18 | 3.3 | Use case 3 | manual | 14d | 2020-04-28 | 2020-05-15 |  |  |  |  |  | Manuel | 112h |  |
| 19 | 3.4 | Use case 4 | manual | 14d | 2020-05-18 | 2020-06-04 | 16 |  |  |  |  | Gabriel | 112h |  |
| 20 | 3.5 | Use case 5 | manual | 14d | 2020-05-18 | 2020-06-04 | 17 |  |  |  |  | Edward | 112h |  |
| 21 | 3.6 | Half Use Cases | manual | 1d | 2020-06-05 | 2020-06-05 | 20 |  |  |  |  |  |  |  |
| 22 | 3.7 | Use case 6 | manual | 14d | 2020-05-18 | 2020-06-04 | 18 |  |  |  |  | Manuel | 112h |  |
| 23 | 3.8 | Use case 7 | manual | 14d | 2020-06-05 | 2020-06-24 | 19 |  |  |  |  | Gabriel | 112h |  |
| 24 | 3.9 | Use case 8 | manual | 14d | 2020-06-05 | 2020-06-24 | 20 |  |  |  |  | Edward | 112h |  |
| 25 | 3.10 | Use case 9 | manual | 14d | 2020-06-05 | 2020-06-24 | 22 |  |  |  |  | Manuel | 112h |  |
| 26 | 3.11 | Use case 10 | manual | 10d | 2020-06-25 | 2020-07-08 | 25 |  |  |  |  | Manuel | 80h |  |
| 27 | 3.12 | Testing (1-3) | manual | 16d | 2020-06-25 | 2020-07-16 | 23 |  |  |  |  | Gabriel | 128h |  |
| 28 | 3.13 | Testing (4-6) | manual | 16d | 2020-06-25 | 2020-07-16 | 24 |  |  |  |  | Edward | 128h |  |
| 29 | 3.14 | Testing (7-10) | manual | 16d | 2020-07-09 | 2020-07-30 | 26 |  |  |  |  | Manuel | 128h |  |
